# 项目规划

Schedule from MS Project, 2020-09-13 to 2020-10-22, costs in ¥, A marks actual dates.

## Calendars

- 标准: Mon-Fri 08:00-12:00, 13:00-17:00; Sat-Sun off.

## Resources

| Resource | Rate |
| --- | --- |
| 项目经理 | 20 |
| UI专家 | 17 |
| 需求专家 | 17 |
| 质量专家 | 17 |
| 程序员1 | 15 |
| 测试员1 | 12 |
| 设计专家 | 17 |
| 程序员2 | 15 |
| 程序员3 | 15 |
| 测试员2 | 12 |
| 间接成本 |  |
| 储备资金 |  |

## Schedule

| ID | WBS | Task | Type | Duration | Start | Finish | Predecessors | Complete | Remaining | Resources | Work | Actual work | Cost | Actual cost |
| --- | --- | --- | --- | --- | --- | --- | --- | --- | --- | --- | --- | --- | --- | --- |
| 1 | 3.6 | **启动** |  | 4d | 2020-09-13 | 2020-09-16 |  |  |  | 储备资金 [0.1%]; 间接成本 [0.1%] | 184h |  | 4,484.8 |  |
| 2 | 1.1 | 组建核心团队 | manual | 1d | 2020-09-13 | 2020-09-13 |  |  |  | 项目经理; UI专家; 需求专家; 质量专家; 程序员1; 测试员1; 设计专家; 程序员2; 程序员3; 测试员2 | 80h |  | 1,256 |  |
| 3 | 1.2 | 干系人分析 | manual | 1d | 2020-09-13 | 2020-09-13 |  |  |  | 项目经理 [70%]; 需求专家 [30%] | 8h |  | 152.8 |  |
| 4 | 1.3 | 里程碑计划 | manual | 1d | 2020-09-13 | 2020-09-13 |  |  |  | 项目经理 | 8h |  | 160 |  |
| 5 | 1.4 | 制定项目章程 | manual | 1d | 2020-09-14 | 2020-09-14 | 2, 3, 4 |  |  | 项目经理 | 8h |  | 160 |  |
| 6 | 1.5 | 项目启动大会 | manual | 1d | 2020-09-17 | 2020-09-17 | 5 |  |  | 项目经理; 需求专家; UI专家; 测试员1; 测试员2; 程序员1; 程序员2; 程序员3; 设计专家; 质量专家 | 80h |  | 1,256 |  |
| 7 | 2 | **规划** |  | 16d | 2020-09-18 A | 2020-10-09 |  | 4% | 15.36d | 储备资金 [0.1%]; 间接成本 [0.1%] | 200h | 8h | 5,080 | 136 |
| 8 | 2.1 | **规划范围** |  | 4d | 2020-09-18 A | 2020-09-23 |  | 17% | 3.33d |  | 48h | 8h | 888 | 136 |
| 9 | 2.1.1 | 制定需求说明书 | manual | 1d | 2020-09-18 A | 2020-09-18 A | 6 | 100% |  | 需求专家 | 8h | 8h | 136 | 136 |
| 10 | 2.1.2 | 界面设计 | manual | 1d | 2020-09-19 | 2020-09-19 | 9 |  |  | UI专家 | 8h |  | 136 |  |
| 11 | 2.1.3 | 详细设计说明书 | manual | 1d | 2020-09-19 | 2020-09-19 | 9 |  |  | 设计专家 | 8h |  | 136 |  |
| 12 | 2.1.4 | 项目范围说明书 | manual | 1d | 2020-09-19 | 2020-09-19 | 9 |  |  | 项目经理 | 8h |  | 160 |  |
| 13 | 2.1.5 | 创建WBS | manual | 1d | 2020-09-20 | 2020-09-20 | 10, 11, 12 |  |  | 项目经理 | 8h |  | 160 |  |
| 14 | 2.1.6 | 形成范围基准 | manual | 1d | 2020-09-21 | 2020-09-21 | 13 |  |  | 项目经理 | 8h |  | 160 |  |
| 15 | 2.2 | **规划时间** |  | 3d | 2020-09-24 | 2020-09-28 |  |  |  |  | 40h |  | 800 |  |
| 16 | 2.2.1 | 排列工作包顺序 | manual | 1d | 2020-09-24 | 2020-09-24 | 14 |  |  | 项目经理 | 8h |  | 160 |  |
| 17 | 2.2.2 | 估算资源 | manual | 1d | 2020-09-25 | 2020-09-25 | 16 |  |  | 项目经理 | 8h |  | 160 |  |
| 18 | 2.2.3 | 估算持续时间 | manual | 1d | 2020-09-26 | 2020-09-26 | 17 |  |  | 项目经理 | 8h |  | 160 |  |
| 19 | 2.2.4 | 制定进度计划 | manual | 1d | 2020-09-27 | 2020-09-27 | 18 |  |  | 项目经理 | 8h |  | 160 |  |
| 20 | 2.2.5 | 形成进度基准 | manual | 1d | 2020-09-28 | 2020-09-28 | 19 |  |  | 项目经理 | 8h |  | 160 |  |
| 21 | 2.3 | **规划成本** |  | 3d | 2020-10-01 | 2020-10-03 |  |  |  |  | 24h |  | 480 |  |
| 22 | 2.3.1 | 项目成本估算 | manual | 1d | 2020-10-01 | 2020-10-01 | 20 |  |  | 项目经理 | 8h |  | 160 |  |
| 23 | 2.3.2 | 项目预算 | manual | 1d | 2020-10-02 | 2020-10-02 | 22 |  |  | 项目经理 | 8h |  | 160 |  |
| 24 | 2.3.3 | 行成范围基准 | manual | 1d | 2020-10-03 | 2020-10-03 | 23 |  |  | 项目经理 | 8h |  | 160 |  |

| ID | WBS | Task | Type | Duration | Start | Finish | Predecessors | Resources | Work | Cost |
| --- | --- | --- | --- | --- | --- | --- | --- | --- | --- | --- |
| 25 | 2.4 | **规划质量** |  | 2d | 2020-09-24 | 2020-09-25 |  |  | 16h | 272 |
| 26 | 2.4.1 | 制定测试计划 | manual | 1d | 2020-09-24 | 2020-09-24 | 14 | 质量专家 | 8h | 136 |
| 27 | 2.4.2 | 指定测试用例 | manual | 1d | 2020-09-25 | 2020-09-25 | 26 | 质量专家 | 8h | 136 |
| 28 | 2.5 | **规划人力资源** |  | 2d | 2020-09-26 | 2020-09-27 |  |  | 16h | 320 |
| 29 | 2.5.1 | 制定人力资源计划 | manual | 1d | 2020-09-26 | 2020-09-26 | 17 | 项目经理 | 8h | 160 |
| 30 | 2.5.2 | 制定人力配备管理计划 | manual | 1d | 2020-09-27 | 2020-09-27 | 29 | 项目经理 | 8h | 160 |
| 31 | 2.6 | **规划沟通** |  | 1d | 2020-09-28 | 2020-09-28 |  |  | 8h | 160 |
| 32 | 2.6.1 | 制定沟通管理计划 | manual | 1d | 2020-09-28 | 2020-09-28 | 30 | 项目经理 | 8h | 160 |
| 33 | 2.7 | **规划采购** |  | 2d | 2020-09-26 | 2020-09-27 |  |  | 16h | 320 |
| 34 | 2.7.1 | 自制外购计划 | manual | 1d | 2020-09-26 | 2020-09-26 | 17 | 项目经理 | 8h | 160 |
| 35 | 2.7.2 | 制定采购文件 | manual | 1d | 2020-09-27 | 2020-09-27 | 34 | 项目经理 | 8h | 160 |
| 36 | 2.8 | **规划风险** |  | 5d | 2020-10-04 | 2020-10-08 |  |  | 24h | 480 |
| 37 | 2.8.1 | 识别风险 | manual | 1d | 2020-10-04 | 2020-10-04 | 15, 21, 25, 28 | 项目经理 | 8h | 160 |
| 38 | 2.8.2 | 风险分析 | manual | 1d | 2020-10-05 | 2020-10-05 | 37 | 项目经理 | 8h | 160 |
| 39 | 2.8.3 | 制定风险登记册 | manual | 1d | 2020-10-08 | 2020-10-08 | 38 | 项目经理 | 8h | 160 |
| 40 | 2.9 | 规划整合 | manual | 1d | 2020-10-09 | 2020-10-09 | 39 | 项目经理 | 8h | 160 |
| 41 | 3 | **执行与监控** |  | 10d | 2020-10-10 | 2020-10-22 |  | 储备资金 [0.1%]; 间接成本 [0.1%] | 1032h | 19,488 |
| 42 | 3.1 | 组建项目团队 | manual | 0.5d | 2020-10-12 | 2020-10-12 | 7 | UI专家; 测试员1; 测试员2; 程序员1; 程序员2; 程序员3; 设计专家; 项目经理; 需求专家; 质量专家 | 40h | 628 |
| 43 | 3.2 | **项目执行** |  | 8d | 2020-10-11 | 2020-10-20 |  |  | 432h | 6,732 |
| 44 | 3.2.1 | **首页模块** |  | 3d | 2020-10-11 | 2020-10-13 |  |  | 24h | 360 |
| 45 | 3.2.1.1 | 搜索笔记 | manual | 2d | 2020-10-12 | 2020-10-13 | 42 | 程序员1 | 16h | 240 |
| 46 | 3.2.1.2 | 笔记展示 | manual | 1d | 2020-10-12 | 2020-10-12 | 42 | 程序员1 | 8h | 120 |
| 47 | 3.2.2 | 首页功能展示 | manual | 0.5d | 2020-10-14 | 2020-10-14 | 45, 46 | UI专家; 程序员1; 项目经理; 需求专家; 质量专家 | 20h | 344 |
| 48 | 3.2.3 | **用户模块** |  | 7d | 2020-10-11 | 2020-10-19 |  |  | 144h | 2,160 |
| 49 | 3.2.3.1 | 注册登录 | manual | 1d | 2020-10-12 | 2020-10-12 | 42 | 程序员2 | 8h | 120 |
| 50 | 3.2.3.2 | 首页 | manual | 1d | 2020-10-14 | 2020-10-14 | 45 | 程序员2 | 8h | 120 |
| 51 | 3.2.3.3 | 收藏夹 | manual | 1d | 2020-10-13 | 2020-10-13 | 49 | 程序员2 | 8h | 120 |
| 52 | 3.2.3.4 | 关注 | manual | 1d | 2020-10-13 | 2020-10-13 | 49 | 程序员3 | 8h | 120 |
| 53 | 3.2.3.5 | 发布笔记 | manual | 5d | 2020-10-13 | 2020-10-19 | 49 | 程序员3 | 40h | 600 |
| 54 | 3.2.3.6 | 发送消息 | manual | 5d | 2020-10-13 | 2020-10-18 | 49 | 程序员3 | 40h | 600 |
| 55 | 3.2.3.7 | 个人设置 | manual | 4d | 2020-10-13 | 2020-10-16 | 49 | 程序员3 | 32h | 480 |
| 56 | 3.2.4 | 用户模块功能展示 | manual | 0.5d | 2020-10-20 | 2020-10-20 | 49, 50, 51, 52, 53, 54, 55 | UI专家; 程序员2; 程序员3; 设计专家; 项目经理; 需求专家; 质量专家 | 28h | 472 |

| ID | WBS | Task | Type | Duration | Start | Finish | Predecessors | Resources | Work | Cost |
| --- | --- | --- | --- | --- | --- | --- | --- | --- | --- | --- |
| 57 | 3.2.5 | **笔记模块** |  | 4d | 2020-10-13 | 2020-10-16 |  |  | 40h | 600 |
| 58 | 3.2.5.1 | 点赞、评论、收藏笔记 | manual | 3d | 2020-10-13 | 2020-10-15 | 46 | 程序员1 | 24h | 360 |
| 59 | 3.2.5.2 | 展示笔记内容 | manual | 2d | 2020-10-13 | 2020-10-14 | 46 | 程序员1 | 16h | 240 |
| 60 | 3.2.6 | 笔记模块功能展示 | manual | 0.5d | 2020-10-16 | 2020-10-16 | 58, 59 | UI专家; 程序员1; 设计专家; 项目经理; 需求专家; 质量专家 | 24h | 412 |
| 61 | 3.2.7 | **发现模块** |  | 3d | 2020-10-14 | 2020-10-16 |  |  | 24h | 360 |
| 62 | 3.2.7.1 | 同城笔记展示 | manual | 1d | 2020-10-14 | 2020-10-14 | 45, 46 | 程序员2 | 8h | 120 |
| 63 | 3.2.7.2 | 关注用户笔记展示 | manual | 2d | 2020-10-14 | 2020-10-15 | 42, 46, 52 | 程序员2 | 16h | 240 |
| 64 | 3.2.8 | 发现模块功能展示 | manual | 0.5d | 2020-10-16 | 2020-10-16 | 62, 63 | UI专家; 程序员2; 设计专家; 项目经理; 需求专家; 质量专家 | 24h | 412 |
| 65 | 3.2.9 | **线上旅游模块** |  | 5d | 2020-10-13 | 2020-10-19 |  |  | 72h | 1,080 |
| 66 | 3.2.9.1 | 旅游线路简介 | manual | 1d | 2020-10-12 | 2020-10-12 | 42 | 程序员1 | 8h | 120 |
| 67 | 3.2.9.2 | 线上旅游打卡 | manual | 4d | 2020-10-13 | 2020-10-16 | 66 | 程序员2; 程序员3 | 64h | 960 |
| 68 | 3.2.10 | 线上旅游功能展示 | manual | 0.5d | 2020-10-19 | 2020-10-19 | 66, 67 | UI专家; 程序员1; 程序员2; 程序员3; 设计专家; 项目经理; 需求专家; 质量专家 | 32h | 532 |
| 69 | 3.3 | **项目监控** |  | 8d | 2020-10-11 | 2020-10-20 |  |  | 208h | 3,464 |
| 70 | 3.3.1 | 各项指标监控 | manual | 1d | 2020-10-13 | 2020-10-13 | 42 | 测试员1; UI专家; 设计专家; 项目经理; 需求专家; 质量专家 | 48h | 800 |
| 71 | 3.3.2 | 监控评审 | manual | 1d | 2020-10-14 | 2020-10-14 | 70 | UI专家; 设计专家; 项目经理; 需求专家; 质量专家 | 40h | 704 |
| 72 | 3.3.3 | 变更评审 | manual | 1d | 2020-10-15 | 2020-10-15 | 71 | UI专家; 设计专家; 项目经理; 需求专家; 质量专家 | 40h | 704 |
| 73 | 3.3.4 | 例会 | manual | 1d | 2020-10-13 | 2020-10-13 | 42 | UI专家; 测试员1; 测试员2; 程序员1; 程序员2; 程序员3; 设计专家; 项目经理; 需求专家; 质量专家 | 80h | 1,256 |
| 74 | 3.4 | **管理干系人** |  | 1d | 2020-10-13 | 2020-10-13 |  |  | 24h | 480 |
| 75 | 3.4.1 | 发布项目信息 | manual | 1d | 2020-10-13 | 2020-10-13 | 42 | 项目经理 | 8h | 160 |
| 76 | 3.4.2 | 报告监控指标 | manual | 1d | 2020-10-13 | 2020-10-13 | 42 | 项目经理 | 8h | 160 |
| 77 | 3.4.3 | 干系人沟通 | manual | 1d | 2020-10-13 | 2020-10-13 | 42 | 项目经理 | 8h | 160 |
| 78 | 3.5 | **团队建设** |  | 1d | 2020-10-13 | 2020-10-13 |  |  | 240h | 3,768 |
| 79 | 3.5.1 | 培训 | manual | 1d | 2020-10-13 | 2020-10-13 | 42 | UI专家; 测试员1; 测试员2; 程序员1; 程序员2; 程序员3; 设计专家; 项目经理; 需求专家; 质量专家 | 80h | 1,256 |
| 80 | 3.5.2 | 娱乐活动 | manual | 1d | 2020-10-13 | 2020-10-13 | 42 | UI专家; 测试员1; 测试员2; 程序员1; 程序员2; 程序员3; 设计专家; 项目经理; 需求专家; 质量专家 | 80h | 1,256 |
| 81 | 3.5.3 | 沟通 | manual | 1d | 2020-10-13 | 2020-10-13 | 42 | UI专家; 测试员1; 测试员2; 程序员1; 程序员2; 程序员3; 设计专家; 项目经理; 需求专家; 质量专家 | 80h | 1,256 |
| 82 | 3.6 | 采购 | manual | 1d | 2020-10-13 | 2020-10-13 | 42 | 项目经理 | 8h | 160 |
| 83 | 3.7 | 项目验收 | manual | 1d | 2020-10-21 | 2020-10-21 | 43 | UI专家; 测试员1; 测试员2; 程序员1; 程序员2; 程序员3; 设计专家; 项目经理; 需求专家; 质量专家 | 80h | 1,256 |

| ID | WBS | Task | Type | Duration | Start | Finish | Predecessors | Resources | Work | Cost |
| --- | --- | --- | --- | --- | --- | --- | --- | --- | --- | --- |
| 84 | 4 | **收尾** |  | 1d | 2020-10-22 | 2020-10-22 |  | 储备资金 [0.1%]; 间接成本 [0.1%] | 40h | 2,204 |
| 85 | 4.1 | 项目终验 | manual | 1d | 2020-10-22 | 2020-10-22 | 83 | UI专家; 设计专家; 项目经理; 需求专家; 质量专家 | 40h | 704 |
